# 二期非车

Schedule from a web Gantt chart, 2025-04-15 to 2025-06-27.
Saturdays and Sundays are off

## Schedule

| ID | WBS | Task | Duration | Start | Finish | Complete | Status |
| --- | --- | --- | --- | --- | --- | --- | --- |
| 2 | 1 | 需求收集 | 14d | 2025-04-15 | 2025-05-02 | 100% | done |
| 3 | 2 | 原型设计 | 14d | 2025-04-15 | 2025-05-02 | 100% | done |
| 4 | 3 | 接口功能拆分设计 | 10d | 2025-04-21 | 2025-05-02 | 100% | done |
| 5 | 4 | 确定所需周边系统 | 5d | 2025-04-28 | 2025-05-02 | 100% | done |
| 7 | 5 | 功能测试 | 10d | 2025-06-09 | 2025-06-20 |  | waiting |
| 8 | 6 | 安全测试 | 5d | 2025-06-16 | 2025-06-20 |  | waiting |
| 9 | 7 | 性能测试 | 5d | 2025-06-16 | 2025-06-20 |  | waiting |
| 10 | 8 | 预上线 | 5d | 2025-06-23 | 2025-06-27 |  | waiting |
